# Casos Uso

Schedule from MS Project, 2010-05-06 to 2010-11-15, costs in $, A marks actual dates.
Hexacta

## Calendars

- Standard: Mon-Fri 08:00-12:00, 13:00-17:00; Sat-Sun off.

## Resources

| Resource | Rate |
| --- | --- |
| Programador Jr 1 | 18.75 |
| Programador Jr 2 | 18.75 |
| Programador Sr 1 | 31.25 |
| Programador Sr 2 | 31.25 |
| Tester | 18.75 |
| IT 1 | 25 |
| Arquitecto | 43.75 |
| Prog SSr 1 |  |

## Schedule

| ID | WBS | Task | Duration | Start | Finish | Predecessors | Total slack | Free slack | Constraint | Resources | Work | Cost |
| --- | --- | --- | --- | --- | --- | --- | --- | --- | --- | --- | --- | --- |
| 1 | 1 | Integracion con el Sistema STARS (Lectura Datos) | 5d | 2010-06-07 | 2010-06-11 | 237 | 18d | 0d |  | Programador Sr 1; Programador Sr 2 | 80h | 2,500 |
| 2 | 2 | Modulo Seguridad que Oculta Info Llamado | 3d | 2010-06-14 | 2010-06-16 | 1 | 108d |  |  | Programador Sr 2; Programador Sr 1 | 48h | 1,500 |
| 3 | 3 | **(GEN01) Identificacion y Autenticacion** | 4d | 2010-06-14 | 2010-06-17 | 1 | 95d | 4d |  |  | 48h | 450 |
| 4 | 3.1 | Autenticacion | 2d | 2010-06-14 | 2010-06-15 |  | 96d | 1d | start no earlier than 2010-06-10 | Programador Jr 1 | 16h | 300 |
| 5 | 3.2 | Interfaz Inicio Sesion | 3d | 2010-06-14 | 2010-06-16 |  | 95d | 0d | start no earlier than 2010-06-08 | Prog SSr 1 | 24h |  |
| 6 | 3.3 | Testing Id y Aut | 1d | 2010-06-17 | 2010-06-17 | 5, 4 | 95d |  |  | Tester | 8h | 150 |
| 7 | 4 | **(GEN02) Gestion General de Registros** | 18d | 2010-06-15 | 2010-07-08 | 1 | 88d | 3d |  |  | 80h | 1,900 |
| 8 | 4.1 | ABM Registro | 2d | 2010-06-30 | 2010-07-01 |  | 91d | 3d | start no earlier than 2010-06-30 | Programador Jr 2 | 16h | 300 |
| 9 | 4.2 | Buscar registro | 1d | 2010-06-29 | 2010-06-29 |  | 93d | 5d | start no earlier than 2010-06-29 | Programador Jr 2 | 8h | 150 |
| 10 | 4.3 | Copiar registro | 1d | 2010-06-15 | 2010-06-15 |  | 103d | 15d | start no earlier than 2010-06-15 | Programador Jr 2 | 8h | 150 |
| 11 | 4.4 | Interfaz ABM Registro | 4d | 2010-06-29 | 2010-07-05 |  | 89.5d | 1.5d | start no earlier than 2010-06-29 | Programador Sr 2 | 32h | 1,000 |
| 12 | 4.5 | Testing Registros | 2d | 2010-07-07 | 2010-07-08 | 11, 9, 8, 10 | 88d |  | start no earlier than 2010-07-07 | Tester | 16h | 300 |
| 13 | 5 | **(USR01) Determinacion del servicio de atencion** | 12d | 2010-08-17 | 2010-09-01 | 94, 40 | 27d | 6d |  |  | 56h | 1,050 |
| 14 | 5.1 | Capturar la Comunicación???? | 2d | 2010-08-17 | 2010-08-18 |  | 36d | 9d | start no earlier than 2010-08-17 | Programador Jr 1 | 16h | 300 |
| 15 | 5.2 | Determinar el tipo de servicio | 1d | 2010-08-26 | 2010-08-26 |  | 30d | 3d | start no earlier than 2010-08-26 | Programador Jr 1 | 8h | 150 |
| 16 | 5.3 | Lista de Espera | 2d | 2010-08-23 | 2010-08-24 |  | 32d | 5d | start no earlier than 2010-08-23 | Programador Jr 1 | 16h | 300 |
| 17 | 5.4 | Determinar conjunto de operadores adecuados al tipo de solicitud | 1d | 2010-08-30 | 2010-08-30 |  | 28d | 1d | start no earlier than 2010-08-30 | Programador Jr 2 | 8h | 150 |
| 18 | 5.5 | Testing Servicio Atencion | 1d | 2010-09-01 | 2010-09-01 | 14, 15, 16, 17 | 27d |  | start no earlier than 2010-09-01 | Tester | 8h | 150 |
| 19 | 6 | **(USR02) Agenda** | 16d | 2010-07-14 | 2010-08-04 | 3, 90 | 69d | 6d |  |  | 128h | 3,000 |
| 20 | 6.1 | Selección de una agenda | 2d | 2010-07-29 | 2010-07-30 |  | 70d | 1d | start no earlier than 2010-07-29 | Programador Jr 1 | 16h | 300 |
| 21 | 6.2 | ABM citas sobre la agenda | 2d | 2010-07-19 | 2010-07-20 |  | 78d | 9d | start no earlier than 2010-07-19 | Programador Jr 1 | 16h | 300 |
| 22 | 6.3 | Interfaz de la Agenda | 3d | 2010-07-14 | 2010-07-16 |  | 80d | 11d | start no earlier than 2010-07-14 | Programador Jr 1 | 24h | 450 |
| 23 | 6.4 | Integracion con Stars - Llamada desde Agenda | 6d | 2010-07-19 | 2010-07-26 |  | 74d | 5d | start no earlier than 2010-07-19 | Programador Sr 1 | 48h | 1,500 |
| 24 | 6.5 | Asignar pacientes a cita | 1d | 2010-07-21 | 2010-07-21 |  | 77d | 8d | start no earlier than 2010-07-21 | Programador Jr 1 | 8h | 150 |
| 25 | 6.6 | Testing Agenda | 2d | 2010-08-03 | 2010-08-04 | 20, 21, 22, 23, 24 | 69d |  | start no earlier than 2010-08-03 | Tester | 16h | 300 |

| ID | WBS | Task | Duration | Start | Finish | Predecessors | Total slack | Free slack | Constraint | Resources | Work | Cost |
| --- | --- | --- | --- | --- | --- | --- | --- | --- | --- | --- | --- | --- |
| 26 | 7 | **(USR03) Rellamada** | 10d | 2010-08-16 | 2010-08-27 | 40, 72 | 56d |  |  |  | 24h | 150 |
| 27 | 7.1 | Rellamada | 2d | 2010-08-16 | 2010-08-17 |  | 63d | 7d | start no earlier than 2010-08-16 | Prog SSr 1 | 16h |  |
| 28 | 7.2 | Testing Rellamada | 1d | 2010-08-27 | 2010-08-27 | 27 | 56d |  | start no earlier than 2010-08-27 | Tester | 8h | 150 |
| 29 | 8 | **(USR04) Consulta** | 7d | 2010-06-14 | 2010-06-22 | 1 | 15d | 0d |  |  | 80h | 1,900 |
| 30 | 8.1 | **Tratar Consulta** | 3d | 2010-06-14 | 2010-06-16 |  | 19d | 4d |  |  | 16h | 300 |
| 31 | 8.1.1 | Ajornar Consulta | 1d | 2010-06-16 | 2010-06-16 |  | 19d |  | start no earlier than 2010-06-16 | Programador Jr 2 | 8h | 150 |
| 32 | 8.1.2 | Transferir consulta | 1d | 2010-06-14 | 2010-06-14 |  | 21d |  | start no earlier than 2010-06-14 | Programador Jr 2 | 8h | 150 |
| 33 | 8.2 | Modulo Envio de Correo | 3d | 2010-06-16 | 2010-06-18 |  | 17d | 2d | start no earlier than 2010-06-16 | Programador Jr 1 | 24h | 450 |
| 34 | 8.3 | Modulo Envio SMS | 4d | 2010-06-17 | 2010-06-22 |  | 15d | 0d | start no earlier than 2010-06-17 | Programador Sr 1 | 32h | 1,000 |
| 35 | 8.4 | Inclusion en Campaña de Seguimiento | 1d | 2010-06-21 | 2010-06-21 |  | 16d | 1d | start no earlier than 2010-06-21 | Programador Jr 2 | 8h | 150 |
| 36 | 9 | Testing Consulta | 3d | 2010-06-23 | 2010-06-25 | 30, 33, 34, 35 | 101d |  |  | Tester | 24h | 450 |
| 37 | 10 | **(USR05) Consejo Salud** | 3d | 2010-09-07 | 2010-09-09 | 78, 85 | 47d |  |  |  | 24h | 150 |
| 38 | 10.1 | Consejo Salud | 2d | 2010-09-07 | 2010-09-08 |  | 47d | 0d | start no earlier than 2010-09-07 | Prog SSr 1 | 16h |  |
| 39 | 10.2 | Testing Consejo Salud | 1d | 2010-09-09 | 2010-09-09 | 38 | 47d |  | start no earlier than 2010-08-27 | Tester | 8h | 150 |
| 40 | 11 | **(USR06) Gestionar Consulta pendiente** | 4d | 2010-08-09 | 2010-08-12 | 29 | 38d | 0d |  |  | 24h | 450 |
| 41 | 11.1 | Priorizacion de la Lista de Consultas | 2d | 2010-08-09 | 2010-08-10 |  | 39d | 1d | start no earlier than 2010-08-09 | Programador Jr 1 | 16h | 300 |
| 42 | 11.2 | Testing USR06 | 1d | 2010-08-12 | 2010-08-12 | 41 | 38d |  | start no earlier than 2010-08-12 | Tester | 8h | 150 |
| 43 | 12 | **(USR07) Programacion de cita previa** | 7d | 2010-08-18 | 2010-08-26 | 85, 94 | 57d |  |  |  | 32h | 150 |
| 44 | 12.1 | Realizar Citación (Interface con Sistema de citación AP) | 3d | 2010-08-18 | 2010-08-20 |  | 60d | 3d | start no earlier than 2010-08-18 | Prog SSr 1 | 24h |  |
| 45 | 12.2 | Testing USR07 | 1d | 2010-08-26 | 2010-08-26 | 44 | 57d |  | start no earlier than 2010-08-26 | Tester | 8h | 150 |
| 46 | 13 | **(USR08) Gestiones sobre la TSI** | 13d | 2010-08-18 | 2010-09-03 | 94, 85, 29, 1 | -31d | 0d |  |  | 56h | 1,050 |
| 47 | 13.1 | Verificacion Documentacion Necesaria | 1d | 2010-08-25 | 2010-08-25 |  | -25d | 0d | start no earlier than 2010-08-25 | Programador Jr 1 | 8h | 150 |
| 48 | 13.2 | Enviar Gestion (Interface con sistema RCA) | 2d | 2010-09-01 | 2010-09-02 |  | -31d | 0d | start no earlier than 2010-09-01 | Programador Jr 1 | 16h | 300 |
| 49 | 13.3 | Cierre automatico de la consulta por paso de tiempo | 2d | 2010-08-19 | 2010-08-20 |  | -22d | 0d | start no earlier than 2010-08-19 | Programador Jr 1 | 16h | 300 |
| 50 | 13.4 | Guardar LOG gestion TSI | 1d | 2010-08-18 | 2010-08-18 |  | -20d | 0d | start no earlier than 2010-08-18 | Programador Jr 2 | 8h | 150 |
| 51 | 13.5 | Testing | 1d | 2010-09-03 | 2010-09-03 | 47, 48, 49, 50 | -31d | 0d | start no earlier than 2010-09-02 | Tester | 8h | 150 |

| ID | WBS | Task | Duration | Start | Finish | Predecessors | Total slack | Free slack | Constraint | Resources | Work | Cost |
| --- | --- | --- | --- | --- | --- | --- | --- | --- | --- | --- | --- | --- |
| 52 | 14 | **(USR09) Servicio de traduccion** | 15d | 2010-08-11 | 2010-08-31 | 85 | 54d |  |  |  | 112h | 2,300 |
| 53 | 14.1 | Contactar Servicio Externo de Traduccion | 4d | 2010-08-23 | 2010-08-26 |  | 55d | 1d | start no earlier than 2010-08-23 | Prog SSr 1 | 32h |  |
| 54 | 14.2 | Enlace Comunicacion Multiconferencia | 4d | 2010-08-11 | 2010-08-16 |  | 63d | 9d | start no earlier than 2010-08-10 | Programador Sr 2 | 32h | 1,000 |
| 55 | 14.3 | Modulo monitorización de servicio | 4d | 2010-08-17 | 2010-08-20 |  | 59d | 5d | start no earlier than 2010-08-17 | Programador Sr 2 | 32h | 1,000 |
| 56 | 14.4 | Testing | 2d | 2010-08-30 | 2010-08-31 | 53, 54, 55 | 54d |  | start no earlier than 2010-08-30 | Tester | 16h | 300 |
| 57 | 15 | **(USR10) Informacion Sanitaria General** | 2d | 2010-09-15 | 2010-09-16 | 85, 94, 202 | 42d |  |  |  | 16h | 300 |
| 58 | 15.1 | Guardar Informacion Ciudadano | 1d | 2010-09-15 | 2010-09-15 |  | 42d | 0d | start no earlier than 2010-09-07 | Programador Jr 2 | 8h | 150 |
| 59 | 15.2 | Testing | 1d | 2010-09-16 | 2010-09-16 | 58 | 42d |  | start no earlier than 2010-09-13 | Tester | 8h | 150 |
| 60 | 16 | **(USR11) Seguimiento de Patologias** | 18d | 2010-08-13 | 2010-09-07 | 19, 40 | 49d |  |  |  | 64h | 900 |
| 61 | 16.1 | Buscar Campañas Abiertas | 2d | 2010-08-16 | 2010-08-17 |  | 62d | 13d | start no earlier than 2010-08-16 | Programador Jr 2 | 16h | 300 |
| 62 | 16.2 | **Gestionar Seguimiento** | 9d | 2010-08-13 | 2010-08-25 |  | 56d | 7d |  |  | 24h | 300 |
| 63 | 16.2.1 | Visualizar Historial Pacientes | 1d | 2010-08-13 | 2010-08-13 |  | 64d | 15d | start no earlier than 2010-08-13 | Prog SSr 1 | 8h |  |
| 64 | 16.2.2 | Llamada al Paciente | 2d | 2010-08-24 | 2010-08-25 |  | 56d |  | start no earlier than 2010-08-24 | Programador Jr 2 | 16h | 300 |
| 65 | 16.3 | Desligar paciente de campaña | 1d | 2010-08-27 | 2010-08-27 |  | 54d | 5d | start no earlier than 2010-08-27 | Prog SSr 1 | 8h |  |
| 66 | 16.4 | Testing | 2d | 2010-09-06 | 2010-09-07 | 61, 63, 62, 65 | 49d |  | start no earlier than 2010-09-06 | Tester | 16h | 300 |
| 67 | 17 | **(USR12) Encuestas** | 19d | 2010-07-07 | 2010-08-02 | 154 | 64d |  |  |  | 72h | 1,550 |
| 68 | 17.1 | Interfaz de Encuestas | 3d | 2010-07-26 | 2010-07-28 |  | 76d | 1d | start no earlier than 2010-07-26 | Programador Jr 2 | 24h | 450 |
| 69 | 17.2 | Contacto con Encuestado | 2d | 2010-07-09 | 2010-07-12 |  | 88d | 13d | start no earlier than 2010-07-09 | Programador Sr 2 | 16h | 500 |
| 70 | 17.3 | ABM Formulario De Encuesta | 2d | 2010-07-07 | 2010-07-08 |  | 64d | 15d | start no earlier than 2010-07-06 | Programador Jr 2 | 16h | 300 |
| 71 | 17.4 | Testing | 2d | 2010-07-30 | 2010-08-02 | 68, 69, 70 | 75d |  | start no earlier than 2010-07-30 | Tester | 16h | 300 |
| 72 | 18 | **(USR13) Buscar Consultas** | 13d | 2010-07-22 | 2010-08-09 | 90 | 67d | 4d |  |  | 48h | 900 |
| 73 | 18.1 | **Operativo de Busqueda** | 13d | 2010-07-22 | 2010-08-09 |  | 67d |  |  |  | 48h | 900 |
| 74 | 18.1.1 | Buscar según distintos criterios | 3d | 2010-08-04 | 2010-08-06 |  | 67d | 0d | start no earlier than 2010-08-04 | Programador Jr 2 | 24h | 450 |
| 75 | 18.1.2 | Filtrar resultados de la busqueda según permisos del usuario | 1d | 2010-07-30 | 2010-07-30 |  | 72d | 5d | start no earlier than 2010-07-30 | Programador Jr 2 | 8h | 150 |
| 76 | 18.1.3 | Acotar resultados si los mismos sobrepasan el parametro configurable "n" | 1d | 2010-07-22 | 2010-07-22 |  | 78d | 11d | start no earlier than 2010-07-22 | Programador Jr 2 | 8h | 150 |
| 77 | 18.1.4 | Testing | 1d | 2010-08-09 | 2010-08-09 | 74, 75, 76 | 67d |  | start no earlier than 2010-08-02 | Tester | 8h | 150 |

| ID | WBS | Task | Duration | Start | Finish | Predecessors | Total slack | Free slack | Constraint | Resources | Work | Cost |
| --- | --- | --- | --- | --- | --- | --- | --- | --- | --- | --- | --- | --- |
| 78 | 19 | **(USR14) Hacer Uso de Documentos** | 21d | 2010-07-26 | 2010-08-23 | 29 | 34d | 0d |  |  | 96h | 1,800 |
| 79 | 19.1 | Creación y uso de Guias Interrogatorio | 2d | 2010-08-11 | 2010-08-12 |  | 41d |  | start no earlier than 2010-08-11 | Programador Jr 1 | 16h | 300 |
| 80 | 19.2 | Creación y uso Fichas Tematicas | 2d | 2010-08-13 | 2010-08-16 |  | 37d | 3d | start no earlier than 2010-08-13 | Programador Jr 1 | 16h | 300 |
| 81 | 19.3 | Creación y uso de Recursos | 2d | 2010-07-26 | 2010-07-27 |  | 51d | 17d | start no earlier than 2010-07-26 | Programador Jr 1 | 16h | 300 |
| 82 | 19.4 | Búsqueda y selección de documentos | 2d | 2010-08-02 | 2010-08-03 |  | 46d | 12d | start no earlier than 2010-08-02 | Programador Jr 1 | 16h | 300 |
| 83 | 19.5 | Apertura documentos | 2d | 2010-08-04 | 2010-08-05 |  | 44d | 10d | start no earlier than 2010-08-04 | Programador Jr 1 | 16h | 300 |
| 84 | 19.6 | Testing | 2d | 2010-08-20 | 2010-08-23 | 70, 80, 81, 82, 83 | 34d |  | start no earlier than 2010-08-20 | Tester | 16h | 300 |
| 85 | 20 | **(USR15) Cerrar consulta y dar respuesta al ciudadano** | 27d | 2010-07-05 | 2010-08-10 | 29 | -16d | 0d |  |  | 40h | 750 |
| 86 | 20.1 | Clasificar Finalizacion de Consulta | 2d | 2010-07-05 | 2010-07-06 |  | 8d |  | start no earlier than 2010-07-05 | Programador Jr 2 | 16h | 300 |
| 87 | 20.2 | Adición de motivo de cierre a la consulta | 1d | 2010-07-23 | 2010-07-23 |  | -5d | 0d | start no earlier than 2010-07-23 | Programador Jr 2 | 8h | 150 |
| 88 | 20.3 | Creación de clasificaciones ad-hoc | 1d | 2010-07-29 | 2010-07-29 |  | -9d | 0d | start no earlier than 2010-07-29 | Programador Jr 2 | 8h | 150 |
| 89 | 20.4 | Testing | 1d | 2010-08-10 | 2010-08-10 | 86, 87, 88 | -16d | 0d | start no earlier than 2010-08-10 | Tester | 8h | 150 |
| 90 | 21 | **(USR16) Visualizar Consulta** | 7d | 2010-07-02 | 2010-07-12 | 29 | 78d | 1d |  |  | 40h | 750 |
| 91 | 21.1 | Mostrar datos generales de la consulta | 2d | 2010-07-06 | 2010-07-07 |  | 80d | 2d | start no earlier than 2010-06-30 | Programador Jr 1 | 16h | 300 |
| 92 | 21.2 | Mostrar datos según el documento elegido | 2d | 2010-07-02 | 2010-07-05 |  | 82d | 4d | start no earlier than 2010-07-02 | Programador Jr 1 | 16h | 300 |
| 93 | 21.3 | Testing | 1d | 2010-07-12 | 2010-07-12 | 91, 92 | 78d |  | start no earlier than 2010-07-12 | Tester | 8h | 150 |
| 94 | 22 | **(USR17) Crear/Transferir Consulta** | 37d | 2010-06-25 | 2010-08-16 | 29 | -20d | 0d |  |  | 56h | 1,050 |
| 95 | 22.1 | Crear Consulta | 2d | 2010-06-28 | 2010-06-29 |  | 12d |  | start no earlier than 2010-06-28 | Programador Jr 1 | 16h | 300 |
| 96 | 22.2 | Copiar consulta | 2d | 2010-06-25 | 2010-06-28 |  | 13d |  | start no earlier than 2010-06-25 | Programador Jr 2 | 16h | 300 |
| 97 | 22.3 | **Transferir Consulta** | 1d | 2010-08-06 | 2010-08-06 |  | -16d | 0d |  |  | 8h | 150 |
| 98 | 22.3.1 | Localizar a otro operador del mismo perfil | 1d | 2010-08-06 | 2010-08-06 |  | -16d | 0d | start no earlier than 2010-08-06 | Programador Jr 1 | 8h | 150 |
| 99 | 22.4 | Testing | 2d | 2010-08-13 | 2010-08-16 | 95, 96, 98 | -20d | 0d | start no earlier than 2010-08-13 | Tester | 16h | 300 |
| 100 | 23 | **(ADM01) Mantenimiento del Entorno, clasif y prioridades** | 58d | 2010-06-07 | 2010-08-25 | 237 | -24d | 0d |  |  | 200h | 4,450 |
| 101 | 23.1 | Módulo de edición de parametros grales de la aplicación | 4d | 2010-08-05 | 2010-08-10 |  | -15d | 0d | start no earlier than 2010-08-05 | Programador Sr 1 | 32h | 1,000 |
| 102 | 23.2 | Módulo edición listas de clasificaciones (Códigos internos) | 3d | 2010-08-16 | 2010-08-18 |  | -21d | 0d | start no earlier than 2010-08-16 | Programador Sr 1 | 24h | 750 |

| ID | WBS | Task | Duration | Start | Finish | Predecessors | Total slack | Free slack | Constraint | Resources | Work | Cost |
| --- | --- | --- | --- | --- | --- | --- | --- | --- | --- | --- | --- | --- |
| 103 | 23.3 | **Módulo mantenimiento de la lista de espera** | 2d | 2010-06-09 | 2010-06-10 |  | 28d |  |  |  | 32h | 300 |
| 104 | 23.3.1 | ABM de la lista de espera | 2d | 2010-06-09 | 2010-06-10 |  | 28d |  | start no earlier than 2010-06-09 | Programador Jr 1 | 16h | 300 |
| 105 | 23.3.2 | Módulo de gestión de prioridades sobre la lista de espera | 2d | 2010-06-09 | 2010-06-10 |  | 28d |  | start no earlier than 2010-06-09 | Prog SSr 1 | 16h |  |
| 106 | 23.4 | **Módulo mantenimiento de lineas de servicio** | 2d | 2010-06-07 | 2010-06-08 |  | 30d |  |  |  | 32h | 600 |
| 107 | 23.4.1 | ABM lineas de servicio | 2d | 2010-06-07 | 2010-06-08 |  | 30d |  |  | Programador Jr 2 | 16h | 300 |
| 108 | 23.4.2 | ABM servicios para una linea seleccionada | 2d | 2010-06-07 | 2010-06-08 |  | 30d |  | start no earlier than 2010-06-07 | Programador Jr 1 | 16h | 300 |
| 109 | 23.5 | **Módulo mantenimiento agendas** | 17d | 2010-06-09 | 2010-07-01 |  | 13d |  |  |  | 40h | 750 |
| 110 | 23.5.1 | Asignar operadores a agenda | 1d | 2010-06-11 | 2010-06-11 |  | 27d |  | start no earlier than 2010-06-11 | Programador Jr 2 | 8h | 150 |
| 111 | 23.5.2 | ABM de usuarios de la agenda | 2d | 2010-06-30 | 2010-07-01 |  | 13d |  | start no earlier than 2010-06-30 | Programador Jr 1 | 16h | 300 |
| 112 | 23.5.3 | ABM citas de la agenda | 2d | 2010-06-09 | 2010-06-10 |  | 28d |  | start no earlier than 2010-06-09 | Programador Jr 2 | 16h | 300 |
| 113 | 23.6 | **Módulo mantenimiento BBDD** | 3d | 2010-08-11 | 2010-08-13 |  | -18d | 0d |  |  | 24h | 750 |
| 114 | 23.6.1 | Módulo comprobación de formato de archivo | 1d | 2010-08-11 | 2010-08-11 |  | -16d | 0d | start no earlier than 2010-08-11 | Programador Sr 1 | 8h | 250 |
| 115 | 23.6.2 | Módulo actualización de BBDD | 2d | 2010-08-12 | 2010-08-13 |  | -18d | 0d | start no earlier than 2010-08-12 | Programador Sr 1 | 16h | 500 |
| 116 | 23.7 | Testing | 2d | 2010-08-24 | 2010-08-25 | 102, 101, 103, 106, 109, 113 | -24d | 0d | start no earlier than 2010-08-24 | Tester | 16h | 300 |
| 117 | 24 | **(ADM02) Extraccion de estadisticas y listados** | 12d | 2010-08-27 | 2010-09-13 | 100 | 20d | 0d |  |  | 72h | 1,100 |
| 118 | 24.1 | Listados De Administración | 2d | 2010-09-06 | 2010-09-07 |  | 23d | 3d | start no earlier than 2010-09-06 | Programador Sr 1 | 16h | 500 |
| 119 | 24.2 | **Listados Comunes** | 11d | 2010-08-27 | 2010-09-10 |  | 20d | 0d |  |  | 48h | 450 |
| 120 | 24.2.1 | Detalle de estado de finalización consulta/acción | 1d | 2010-09-02 | 2010-09-02 |  | 26d |  | start no earlier than 2010-09-02 | Programador Jr 2 | 8h | 150 |
| 121 | 24.2.2 | Listado de clasificaciones | 1d | 2010-09-01 | 2010-09-01 |  | 27d |  | start no earlier than 2010-09-01 | Prog SSr 1 | 8h |  |
| 122 | 24.2.3 | Listados de incidencias en las comunicaciones | 1d | 2010-09-03 | 2010-09-03 |  | 25d |  | start no earlier than 2010-09-03 | Programador Jr 2 | 8h | 150 |
| 123 | 24.2.4 | Ratios por usuario | 2d | 2010-09-09 | 2010-09-10 |  | 20d |  | start no earlier than 2010-09-09 | Prog SSr 1 | 16h |  |
| 124 | 24.2.5 | Finales de servicio | 1d | 2010-08-27 | 2010-08-27 |  | 30d |  | start no earlier than 2010-08-27 | Programador Jr 1 | 8h | 150 |
| 125 | 24.3 | Testing | 1d | 2010-09-13 | 2010-09-13 | 118, 119 | 20d |  | start no earlier than 2010-08-23 | Tester | 8h | 150 |
| 126 | 25 | **(ADM03) Mantenimiento de documentos** | 11d | 2010-09-01 | 2010-09-15 | 134 | 41d | 0d |  |  | 48h | 900 |
| 127 | 25.1 | Creación y edición de documentos | 2d | 2010-09-13 | 2010-09-14 | 131, 132, 133 | 42d |  | start no earlier than 2010-09-13 | Programador Jr 2 | 16h | 300 |
| 128 | 25.2 | Borrado de documentos | 1d | 2010-09-03 | 2010-09-03 |  | 49d |  | start no earlier than 2010-09-03 | Programador Jr 1 | 8h | 150 |
| 129 | 25.3 | Clasificación de documentos | 1d | 2010-09-01 | 2010-09-01 |  | 51d |  | start no earlier than 2010-08-31 | Programador Jr 2 | 8h | 150 |
| 130 | 25.4 | Búsqueda de documentos | 2d | 2010-09-14 | 2010-09-15 |  | 41d |  | start no earlier than 2010-09-14 | Programador Jr 1 | 16h | 300 |
| 131 | 26 | (ADM04) Mantenimiento de Recursos | 3d | 2010-08-24 | 2010-08-26 | 78 | 49d | 1d | start no earlier than 2010-08-02 | Programador Sr 2 | 24h | 750 |
| 132 | 27 | (ADM05) Mantenimiento de guias de interrogatorio | 3d | 2010-09-02 | 2010-09-06 | 134, 78 | 46d | 4d | start no earlier than 2010-09-02 | Prog SSr 1 | 24h |  |
| 133 | 28 | (ADM06) Mantenimiento de Fichas tematicas | 3d | 2010-09-08 | 2010-09-10 | 134, 78 | 42d | 0d | start no earlier than 2010-09-08 | Programador Sr 1 | 24h | 750 |

| ID | WBS | Task | Duration | Start | Finish | Predecessors | Total slack | Free slack | Constraint | Resources | Work | Cost |
| --- | --- | --- | --- | --- | --- | --- | --- | --- | --- | --- | --- | --- |
| 134 | 29 | **(ADM07) Mantenimiento de relaciones sobre guias de interrogatorio y fichas tematicas** | 2d | 2010-08-30 | 2010-08-31 | 131 | 47d | 0d |  |  | 16h | 150 |
| 135 | 29.1 | Adición de documentos a fichas temáticas | 1d | 2010-08-31 | 2010-08-31 |  | 47d |  | start no earlier than 2010-08-31 | Programador Jr 2 | 8h | 150 |
| 136 | 29.2 | Adición de documentos a guias de interrogatorio | 1d | 2010-08-30 | 2010-08-30 |  | 48d |  | start no earlier than 2010-08-30 | Prog SSr 1 | 8h |  |
| 137 | 30 | **(ADM08) Mantenimiento de encuestas** | 11d | 2010-07-09 | 2010-07-23 | 154 | 81d |  |  |  | 80h | 1,500 |
| 138 | 30.1 | **Mantenimiento Indice de Encuestas** | 5d | 2010-07-14 | 2010-07-20 |  | 84d |  |  |  | 24h | 450 |
| 139 | 30.1.1 | Mantener Ediciones | 2d | 2010-07-19 | 2010-07-20 |  | 84d |  | start no earlier than 2010-07-19 | Programador Jr 2 | 16h | 300 |
| 140 | 30.1.2 | Cierre de ediciones | 1d | 2010-07-14 | 2010-07-14 |  | 88d |  | start no earlier than 2010-07-14 | Programador Jr 2 | 8h | 150 |
| 141 | 30.2 | Asignación de formulario a encuesta | 1d | 2010-07-22 | 2010-07-22 |  | 82d |  | start no earlier than 2010-07-22 | Programador Jr 1 | 8h | 150 |
| 142 | 30.3 | Asignación de operadores a encuesta | 1d | 2010-07-09 | 2010-07-09 |  | 91d |  | start no earlier than 2010-07-09 | Programador Jr 2 | 8h | 150 |
| 143 | 30.4 | **Asignación lista de encuestados** | 10d | 2010-07-12 | 2010-07-23 |  | 81d |  |  |  | 24h | 450 |
| 144 | 30.4.1 | Alta, baja de encuestados | 2d | 2010-07-12 | 2010-07-13 |  | 89d |  | start no earlier than 2010-07-12 | Programador Jr 2 | 16h | 300 |
| 145 | 30.4.2 | Asignación automática en base a un archivo de texto | 1d | 2010-07-23 | 2010-07-23 |  | 81d |  | start no earlier than 2010-07-23 | Programador Jr 1 | 8h | 150 |
| 146 | 30.5 | Publicar Encuestas | 2d | 2010-07-15 | 2010-07-16 |  | 86d |  | start no earlier than 2010-07-15 | Programador Jr 2 | 16h | 300 |
| 147 | 31 | **(ADM09) Mantenimiento de seguimiento de patologias** | 5d | 2010-08-26 | 2010-09-01 | 100 | 48d | 8d |  |  | 64h | 1,350 |
| 148 | 31.1 | Mantenimiento Indice de campañas de seguimiento | 3d | 2010-08-30 | 2010-09-01 |  | 48d |  | start no earlier than 2010-08-30 | Programador Sr 2 | 24h | 750 |
| 149 | 31.2 | Asignación de formulario a campaña de seguimiento | 1d | 2010-08-30 | 2010-08-30 |  | 50d |  | start no earlier than 2010-08-30 | Programador Jr 1 | 8h | 150 |
| 150 | 31.3 | Asignación de operadores a campaña de seguimiento | 1d | 2010-08-31 | 2010-08-31 |  | 49d |  | start no earlier than 2010-08-31 | Programador Jr 1 | 8h | 150 |
| 151 | 31.4 | Asignación de listas de pacientes | 1d | 2010-08-31 | 2010-08-31 |  | 49d |  | start no earlier than 2010-08-31 | Prog SSr 1 | 8h |  |
| 152 | 31.5 | Activación/ Desactivación de campañas | 2d | 2010-08-26 | 2010-08-27 |  | 51d |  | start no earlier than 2010-08-17 | Programador Jr 2 | 16h | 300 |
| 153 | 32 | Testing ADM 3 al 9 | 3d | 2010-08-17 | 2010-08-19 |  | 62d |  | start no earlier than 2010-08-17 | Tester | 24h | 450 |
| 154 | 33 | **(ADM10) Creacion de formularios de encuesta y seguimiento** | 22d | 2010-06-07 | 2010-07-06 | 237 | 64d | 0d |  |  | 48h | 900 |
| 155 | 33.1 | Mantener Indice de Encuesta | 3d | 2010-07-01 | 2010-07-05 |  | 64d | 0d | start no earlier than 2010-07-01 | Programador Sr 1 | 24h | 750 |
| 156 | 33.2 | Crear y Editar Encuestas | 2d | 2010-06-07 | 2010-06-08 |  | 83d | 19d |  | Prog SSr 1 | 16h |  |
| 157 | 33.3 | Testing Creacion Formularios Enc y Seg | 1d | 2010-07-06 | 2010-07-06 | 155, 156 | 64d |  | start no earlier than 2010-07-06 | Tester | 8h | 150 |

| ID | WBS | Task | Duration | Start | Finish | Predecessors | Total slack | Free slack | Constraint | Resources | Work | Cost |
| --- | --- | --- | --- | --- | --- | --- | --- | --- | --- | --- | --- | --- |
| 158 | 34 | **(ADM11) Mantenimiento de usuarios, perfiles y permisos** | 17d | 2010-06-17 | 2010-07-09 | 1 | 65d | 7d |  |  | 88h | 1,850 |
| 159 | 34.1 | Mantenimiento Opciones Funcionales | 2d | 2010-06-17 | 2010-06-18 |  | 80d | 16d | start no earlier than 2010-06-17 | Programador Sr 2 | 16h | 500 |
| 160 | 34.2 | **Mantener Perfiles Trabajo** | 12d | 2010-06-17 | 2010-07-02 |  | 70d | 6d |  |  | 40h | 750 |
| 161 | 34.2.1 | Alta, modificación de perfiles | 2d | 2010-06-22 | 2010-06-23 |  | 77d |  | start no earlier than 2010-06-22 | Programador Jr 1 | 16h | 300 |
| 162 | 34.2.2 | ABM de opciones funcionales a perfil | 2d | 2010-06-17 | 2010-06-18 |  | 80d |  | start no earlier than 2010-06-17 | Programador Jr 2 | 16h | 300 |
| 163 | 34.2.3 | Adición de responsabilidades a opciones funcionales | 1d | 2010-07-02 | 2010-07-02 |  | 70d |  | start no earlier than 2010-07-02 | Programador Jr 2 | 8h | 150 |
| 164 | 34.3 | **Mantener Usuarios** | 15d | 2010-06-21 | 2010-07-09 |  | 65d | 1d |  |  | 32h | 600 |
| 165 | 34.3.1 | Creación/gestion de usuarios | 1d | 2010-06-21 | 2010-06-21 |  | 79d |  | start no earlier than 2010-06-21 | Programador Jr 1 | 8h | 150 |
| 166 | 34.3.2 | Asiganción de perfil a usuario | 1d | 2010-06-22 | 2010-06-22 |  | 78d |  | start no earlier than 2010-06-22 | Programador Jr 2 | 8h | 150 |
| 167 | 34.3.3 | Asignación de agendas a usuario | 2d | 2010-07-08 | 2010-07-09 |  | 65d |  | start no earlier than 2010-07-08 | Programador Jr 1 | 16h | 300 |
| 168 | 35 | Testing Mantenimiento Usuarios | 1d | 2010-07-13 | 2010-07-13 | 159, 160, 164 | 89d |  | start no earlier than 2010-07-13 | Tester | 8h | 150 |
| 169 | 36 | **(ADM12) Listado de acciones proactivas** | 16d | 2010-09-14 | 2010-10-05 | 117, 147 | 29d |  |  |  | 136h | 4,050 |
| 170 | 36.1 | Módulo de elaboraciónde informes de estado de campaña de seguimiento | 3d | 2010-09-14 | 2010-09-16 |  | 40d | 11d | start no earlier than 2010-09-13 | Programador Sr 1 | 24h | 750 |
| 171 | 36.2 | Módulo de elaboración de informes de estado de encuesta | 3d | 2010-09-22 | 2010-09-24 |  | 34d | 5d | start no earlier than 2010-09-22 | Programador Sr 2 | 24h | 750 |
| 172 | 36.3 | Módulo de elaboración de informes de ediciones de encuestas | 3d | 2010-09-17 | 2010-09-21 |  | 37d | 8d | start no earlier than 2010-09-17 | Programador Sr 1 | 24h | 750 |
| 173 | 36.4 | Módulo de elaboración de listados de campañas de seguimiento | 3d | 2010-09-27 | 2010-09-29 |  | 31d | 2d | start no earlier than 2010-09-27 | Programador Sr 2 | 24h | 750 |
| 174 | 36.5 | Módulo de elaboración de listados de información de encuestas | 3d | 2010-09-22 | 2010-09-24 |  | 34d | 5d | start no earlier than 2010-09-22 | Programador Sr 1 | 24h | 750 |
| 175 | 36.6 | Testing Listados Proactivas | 2d | 2010-10-04 | 2010-10-05 | 170, 171, 172, 173, 174 | 29d |  | start no earlier than 2010-10-04 | Tester | 16h | 300 |
| 176 | 37 | **(ADM13) Listados de documentos** | 7d | 2010-09-16 | 2010-09-24 | 117, 126 | 36d |  |  |  | 32h | 600 |
| 177 | 37.1 | Elaboración de listado de configuración | 1d | 2010-09-23 | 2010-09-23 |  | 36d | 0d | start no earlier than 2010-09-23 | Programador Jr 1 | 8h | 150 |
| 178 | 37.2 | Elaboración de listado de uso | 1d | 2010-09-16 | 2010-09-16 |  | 41d | 5d | start no earlier than 2010-09-06 | Programador Jr 2 | 8h | 150 |
| 179 | 37.3 | Elaboración de listado de asociaciones | 1d | 2010-09-17 | 2010-09-17 |  | 40d | 4d | start no earlier than 2010-09-17 | Programador Jr 2 | 8h | 150 |
| 180 | 37.4 | Testing Listado Docs | 1d | 2010-09-24 | 2010-09-24 | 177, 178, 179 | 36d |  | start no earlier than 2010-09-10 | Tester | 8h | 150 |
| 181 | 38 | **(ADM14) Listado sobre consultas** | 21d | 2010-09-14 | 2010-10-12 | 117, 29 | 24d |  |  |  | 216h | 4,950 |
| 182 | 38.1 | Módulo de obtención de listados de consulta por ciudadano | 3d | 2010-09-14 | 2010-09-16 |  | 39d | 15d | start no earlier than 2010-09-13 | Prog SSr 1 | 24h |  |
| 183 | 38.2 | Módulo de obtención de listados de consultas con cierre principal | 3d | 2010-09-30 | 2010-10-04 |  | 27d | 3d | start no earlier than 2010-09-30 | Programador Sr 2 | 24h | 750 |
| 184 | 38.3 | Módulo de obtención de listados de consulta con cierre secundario | 3d | 2010-09-30 | 2010-10-04 |  | 27d | 3d | start no earlier than 2010-09-30 | Programador Sr 1 | 24h | 750 |
| 185 | 38.4 | Módulo de obtención de listados de consulta por motivo de cierre | 3d | 2010-09-17 | 2010-09-21 |  | 36d | 12d | start no earlier than 2010-09-17 | Prog SSr 1 | 24h |  |
| 186 | 38.5 | Módulo de obtención de listado de resumen de consultas por servicio | 3d | 2010-09-14 | 2010-09-16 |  | 39d | 15d | start no earlier than 2010-09-13 | Programador Sr 2 | 24h | 750 |
| 187 | 38.6 | Módulo de obtención de listado de consultas por área geográfica | 3d | 2010-10-05 | 2010-10-07 |  | 24d | 0d | start no earlier than 2010-10-05 | Programador Sr 2 | 24h | 750 |
| 188 | 38.7 | Módulo de obtención de listado de consultas por usuario | 3d | 2010-09-27 | 2010-09-29 |  | 30d | 6d | start no earlier than 2010-09-27 | Programador Sr 1 | 24h | 750 |
| 189 | 38.8 | Módulo de obtención de listado de consultas pendientes | 3d | 2010-09-17 | 2010-09-21 |  | 36d | 12d | start no earlier than 2010-09-17 | Programador Sr 2 | 24h | 750 |
| 190 | 38.9 | Testing Listado Consultas | 3d | 2010-10-08 | 2010-10-12 | 182, 183, 184, 185, 186, 187, 188, 189 | 24d |  | start no earlier than 2010-09-20 | Tester | 24h | 450 |

| ID | WBS | Task | Type | Duration | Start | Finish | Predecessors | Total slack | Free slack | Constraint | Resources | Work | Cost |
| --- | --- | --- | --- | --- | --- | --- | --- | --- | --- | --- | --- | --- | --- |
| 191 | 39 | **(ADM15) Mantener Asignaciones TSI** |  | 42d? | 2010-07-23 | 2010-09-20 | 100, 46 | 0d |  |  |  | 96h | 2,300 |
| 192 | 39.1 | **Módulo de envío de datos a CatSalut** |  | 36d? | 2010-07-23 | 2010-09-10 |  | 0d |  |  |  | 80h | 2,000 |
| 193 | 39.1.1 | Módulo de envío de datos a CatSalut | milestone | 0d? | 2010-07-23 | 2010-07-23 |  | -31d | 0d | must start on 2010-07-23 |  |  |  |
| 194 | 39.1.2 | Recolección de datos de operaciones TSI pendientes |  | 3d | 2010-09-06 | 2010-09-08 |  | 46d |  | start no earlier than 2010-08-19 | Programador Jr 2 | 24h | 450 |
| 195 | 39.1.3 | Migración de los datos a archivo TXT |  | 2d | 2010-09-09 | 2010-09-10 |  | 44d |  | start no earlier than 2010-09-09 | Programador Jr 2 | 16h | 300 |
| 196 | 39.1.4 | Interface de comunicación con CatSalut |  | 5d | 2010-09-06 | 2010-09-10 |  | 44d |  | start no earlier than 2010-08-02 | Programador Sr 2 | 40h | 1,250 |
| 197 | 39.2 | Testing TSI |  | 2d | 2010-09-17 | 2010-09-20 | 192 | 40d |  | start no earlier than 2010-09-17 | Tester | 16h | 300 |
| 198 | 40 | **(ADM16) Asignar documentos a acciones** |  | 5d | 2010-09-16 | 2010-09-22 | 126 | 38d |  |  |  | 24h | 450 |
| 199 | 40.1 | Creación/eliminación de asociaciones |  | 1d | 2010-09-20 | 2010-09-20 |  | 39d | 1d | start no earlier than 2010-09-20 | Programador Jr 2 | 8h | 150 |
| 200 | 40.2 | Caducidad de asociaciones |  | 1d | 2010-09-16 | 2010-09-16 |  | 41d | 3d | start no earlier than 2010-09-16 | Programador Jr 1 | 8h | 150 |
| 201 | 40.3 | Testing Asignacion Docs a Acciones |  | 1d | 2010-09-22 | 2010-09-22 | 199, 200 | 38d |  | start no earlier than 2010-09-22 | Tester | 8h | 150 |
| 202 | 41 | **(INT01) Direcciones de farmacias, CAP y otra informacion breve** |  | 3d | 2010-09-10 | 2010-09-14 | 13, 78, 100 | 21d | 0d |  |  | 24h | 450 |
| 203 | 41.1 | Trabajo con listas de resultados |  | 2d | 2010-09-10 | 2010-09-13 |  | 21d | 0d | start no earlier than 2010-09-10 | Programador Jr 1 | 16h | 300 |
| 204 | 41.2 | Testing Dirs |  | 1d | 2010-09-14 | 2010-09-14 | 203 | 21d |  | start no earlier than 2010-09-09 | Tester | 8h | 150 |
| 205 | 42 | **(SIS01) Trazabilidad y registro de uso** |  | 34.5d | 2010-06-21 | 2010-08-06 | 1 | 71d |  |  |  | 192h | 4,800 |
| 206 | 42.1 | Control Acceso a Consultas |  | 3d | 2010-06-23 | 2010-06-25 |  | 99d | 28d | start no earlier than 2010-06-23 | Programador Sr 1 | 24h | 750 |
| 207 | 42.2 | Control Acceso a Encuestas |  | 3d | 2010-07-06 | 2010-07-08 |  | 90d | 19d | start no earlier than 2010-07-06 | Programador Sr 2 | 24h | 750 |
| 208 | 42.3 | Control General Acceso al Sistema |  | 3d | 2010-06-28 | 2010-06-30 |  | 96d | 25d | start no earlier than 2010-06-28 | Programador Sr 1 | 24h | 750 |
| 209 | 42.4 | Control Acceso a Campañas de Seguimiento |  | 3d | 2010-06-21 | 2010-06-24 |  | 100.5d | 29.5d | start no earlier than 2010-06-21 | Programador Sr 2 | 24h | 750 |
| 210 | 42.5 | Control Acceso a Documentos |  | 3d | 2010-07-13 | 2010-07-15 |  | 85d | 14d | start no earlier than 2010-07-13 | Programador Sr 2 | 24h | 750 |
| 211 | 42.6 | Control Acceso a Recursos Internos |  | 3d | 2010-06-24 | 2010-06-29 |  | 97.5d | 26.5d | start no earlier than 2010-06-24 | Programador Sr 2 | 24h | 750 |
| 212 | 42.7 | Historial de Consultas |  | 4d | 2010-07-27 | 2010-07-30 |  | 74d | 3d | start no earlier than 2010-07-27 | Prog SSr 1 | 32h |  |
| 213 | 42.8 | Testing Trazabilidad / Registro |  | 2d | 2010-08-05 | 2010-08-06 | 206, 207, 208, 209, 210, 211, 212 | 71d |  | start no earlier than 2010-08-05 | Tester | 16h | 300 |
| 214 | 43 | **(ISC01) Transferir info, comunicacion a STARS** |  | 7d | 2010-06-17 | 2010-06-25 | 1 | 101d |  |  |  | 56h |  |
| 215 | 43.1 | Recibir información del sistema de comunicaciones |  | 7d | 2010-06-17 | 2010-06-25 |  | 101d |  | start no earlier than 2010-06-17 | Prog SSr 1 | 56h |  |

| ID | WBS | Task | Duration | Start | Finish | Predecessors | Total slack | Free slack | Constraint | Resources | Work | Cost |
| --- | --- | --- | --- | --- | --- | --- | --- | --- | --- | --- | --- | --- |
| 216 | 44 | **(ISC02) Iniciar llamada desde STARS** | 12d | 2010-07-27 | 2010-08-11 | 1 | 68d |  |  |  | 64h | 1,900 |
| 217 | 44.1 | Lanzamiento de petición de comunicación | 7d | 2010-07-27 | 2010-08-04 |  | 72d | 4d | start no earlier than 2010-07-27 | Programador Sr 1 | 56h | 1,750 |
| 218 | 44.2 | Testing Inicio Llamada STARS | 1d | 2010-08-11 | 2010-08-11 | 217 | 68d |  | start no earlier than 2010-08-11 | Tester | 8h | 150 |
| 219 | 45 | **(ISC03) Informacion encuesta** | 1d | 2010-07-21 | 2010-07-21 | 154 | 83d |  |  |  | 8h | 150 |
| 220 | 45.1 | Activación actividad de encuesta | 1d | 2010-07-21 | 2010-07-21 |  | 83d |  | start no earlier than 2010-07-21 | Programador Jr 2 | 8h | 150 |
| 221 | 46 | ABM Consultas | 2d | 2010-06-23 | 2010-06-24 | 29 | 98d | 66d | start no earlier than 2010-06-22 | Programador Jr 2 | 16h | 300 |
| 222 | 47 | ABM Usuarios | 2d | 2010-06-24 | 2010-06-25 | 3 | 97d | 14d | start no earlier than 2010-06-24 | Programador Jr 1 | 16h | 300 |
| 223 | 48 | Proteccion de Acceso | 3d | 2010-07-16 | 2010-07-20 | 222 | 84d |  | start no earlier than 2010-07-16 | Programador Sr 2 | 24h | 750 |
| 224 | 49 | ABM Fichas / Guias / Recursos | 4d | 2010-09-06 | 2010-09-09 | 131 | 43d | 11d | start no earlier than 2010-09-06 | Programador Jr 1 | 32h | 600 |
| 225 | 50 | ABM Cuestionarios | 2d | 2010-07-12 | 2010-07-13 | 154 | 85d | 53d | start no earlier than 2010-07-12 | Programador Jr 1 | 16h | 300 |
| 226 | 51 | Interfaz General | 20d | 2010-06-28 | 2010-07-23 | 1 | 63d | 57d | start no earlier than 2010-06-28 | Prog SSr 1 | 160h |  |
| 227 | 52 | Interfaz Para Usuario Avanzado | 7d | 2010-08-26 | 2010-09-03 | 100 | 33d | 27d | start no earlier than 2010-08-18 | Programador Sr 1 | 56h | 1,750 |
| 228 | 53 | Interfaz de Listados para ADM02 | 7d | 2010-09-21 | 2010-09-29 | 117 | 15d | 9d | start no earlier than 2010-09-21 | Programador Jr 2 | 56h | 1,050 |
| 229 | 54 | Interfaz Mantenimiento Usuarios y Perfiles | 8d | 2010-07-21 | 2010-07-30 | 158 | 58d | 52d | start no earlier than 2010-07-21 | Programador Sr 2 | 64h | 2,000 |
| 230 | 55 | Interfaz Direcciones INT01 | 5d | 2010-09-22 | 2010-09-28 | 202 | 16d | 10d | start no earlier than 2010-09-22 | Prog SSr 1 | 40h |  |
| 231 | 56 | ABM Enfermedades / Centros Salud | 3d | 2010-09-20 | 2010-09-22 | 202 | 34d | 2d | start no earlier than 2010-09-20 | Programador Jr 1 | 24h | 450 |
| 232 | 57 | Listado de Usuarios y Perfiles | 1d | 2010-07-28 | 2010-07-28 | 158 | 78d |  | start no earlier than 2010-07-28 | Programador Jr 1 | 8h | 150 |
| 233 | 58 | Interface con sistema de comunicaciones (ISC01, ISC02, ISC03) | 9d | 2010-07-06 | 2010-07-16 | 1 | 68d | 62d | start no earlier than 2010-07-06 | Programador Sr 1 | 72h | 2,250 |
| 234 | 59 | Testing ABMs Varios | 4d | 2010-09-27 | 2010-09-30 | 221, 222, 224, 225, 231 | 32d |  | start no earlier than 2010-09-27 | Tester | 32h | 600 |
| 235 | 60 | Testing Interfaces Varias | 3d | 2010-10-13 | 2010-10-15 | 226, 227, 228, 229, 230, 233 | 6d | 0d | start no earlier than 2010-10-13 | Tester | 24h | 450 |
| 237 | 61 | Arquitectura General / Configuracion Ambientes / Framework | 15d | 2010-05-17 | 2010-06-04 | 242 | 18d | 0d |  | Arquitecto | 120h | 5,250 |
| 238 | 62 | **Tareas IT Sobre Nuestra Empresa** | 138d? | 2010-05-06 | 2010-11-15 |  | 0d |  |  |  | 1024h | 28,450 |
| 239 | 62.1 | Compra Equipos Necesarios | 2d | 2010-05-06 | 2010-05-07 |  | 134d | 0d | start no earlier than 2010-05-06 | Programador Jr 1; Programador Jr 2 | 32h | 600 |
| 240 | 62.2 | **Infraestructura** | 12d | 2010-05-06 | 2010-05-21 |  | 21d | 0d |  |  | 96h | 2,400 |
| 241 | 62.2.1 | Preparacion de Ambientes en servidores | 3d | 2010-05-06 | 2010-05-10 |  | 132d |  | start no earlier than 2010-05-06 | IT 1 | 24h | 600 |
| 242 | 62.2.2 | Instalacion y Configuracion de Servidor DEV | 4d | 2010-05-11 | 2010-05-14 |  | 18d | 0d | start no earlier than 2010-05-11 | IT 1 | 32h | 800 |
| 243 | 62.2.3 | Instalacion y Configuracion de Servidores de Usos Multiples | 5d | 2010-05-17 | 2010-05-21 |  | 123d |  | start no earlier than 2010-05-17 | IT 1 | 40h | 1,000 |

| ID | WBS | Task | Type | Duration | Start | Finish | Predecessors | Complete | Remaining | Total slack | Free slack | Constraint | Resources | Work | Actual work | Cost | Actual cost |
| --- | --- | --- | --- | --- | --- | --- | --- | --- | --- | --- | --- | --- | --- | --- | --- | --- | --- |
| 244 | 62.3 | **Redes** |  | 12d | 2010-05-24 | 2010-06-08 | 240 |  |  | 114d |  |  |  | 40h |  | 1,000 |  |
| 245 | 62.3.1 | Configuracion del FW |  | 3d | 2010-06-04 | 2010-06-08 |  |  |  | 114d |  | start no earlier than 2010-06-04 | IT 1 | 24h |  | 600 |  |
| 246 | 62.3.2 | Configuracion Red Interna |  | 2d | 2010-05-24 | 2010-05-25 |  |  |  | 124d |  | start no earlier than 2010-05-24 | IT 1 | 16h |  | 400 |  |
| 247 | 62.4 | Instalacion de pcs nuevos usuarios |  | 2d | 2010-05-10 | 2010-05-11 | 239 |  |  | 134d |  | start no earlier than 2010-05-07 | Programador Jr 1; Programador Jr 2 | 32h |  | 600 |  |
| 249 | 62.5 | **Configuracion del Ambiente de Produccion** |  | 24d? | 2010-08-02 | 2010-09-02 |  |  |  | 0d |  |  |  | 104h |  | 2,600 |  |
| 250 | 62.5.1 | Configuracion del Ambiente de Produccion | milestone | 0d? | 2010-08-02 | 2010-08-02 |  |  |  | 0d |  | must start on 2010-08-02 |  |  |  |  |  |
| 251 | 62.5.2 | Configuracion del Ambiente de Produccion | milestone | 0d? | 2010-09-02 | 2010-09-02 |  |  |  | 0d |  | must finish on 2010-09-02 |  |  |  |  |  |
| 252 | 62.5.3 | Instalar y Configurar Load Balancer |  | 3d | 2010-08-23 | 2010-08-25 |  |  |  | 43d |  | start no earlier than 2010-08-23 | IT 1 | 24h |  | 600 |  |
| 253 | 62.5.4 | Instalar y Configurar APP Server |  | 3d | 2010-08-17 | 2010-08-19 |  |  |  | 47d |  | start no earlier than 2010-08-17 | IT 1 | 24h |  | 600 |  |
| 254 | 62.5.5 | Instalar y Configurar DB Server |  | 4d | 2010-08-09 | 2010-08-12 |  |  |  | 52d |  | start no earlier than 2010-08-09 | IT 1 | 32h |  | 800 |  |
| 255 | 62.5.6 | Instalar y Configurar Web Server |  | 3d | 2010-08-30 | 2010-09-01 |  |  |  | 38d |  | start no earlier than 2010-08-30 | IT 1 | 24h |  | 600 |  |
| 257 | 62.6 | Puesta en Marcha |  | 10d | 2010-10-18 | 2010-10-29 | 249, 235 |  |  | 6d | 0d | start no earlier than 2010-10-18 | IT 1; Arquitecto; Programador Sr 1; Programador Sr 2 | 320h |  | 10,500 |  |
| 258 | 62.7 | Testeo Final en Produccion |  | 9d | 2010-10-18 | 2010-10-28 | 270 |  |  | 7d | 1d |  | Tester | 72h |  | 1,350 |  |
| 260 | 62.8 | **Web Server (Consultas Externas del Cliente)** |  | 22d | 2010-07-14 | 2010-08-12 | 7, 30 |  |  | 67d |  |  |  | 88h |  | 900 |  |
| 261 | 62.8.1 | Interfaz Web Server |  | 4d | 2010-08-09 | 2010-08-12 |  |  |  | 67d |  | start no earlier than 2010-08-09 | Programador Jr 2 | 32h |  | 600 |  |
| 262 | 62.8.2 | Modulo Chat |  | 3d | 2010-08-02 | 2010-08-04 |  |  |  | 73d |  | start no earlier than 2010-08-02 | Prog SSr 1 | 24h |  |  |  |
| 263 | 62.8.3 | Busquedas y Listados del Web Server |  | 2d | 2010-08-05 | 2010-08-06 |  |  |  | 71d |  | start no earlier than 2010-08-05 | Prog SSr 1 | 16h |  |  |  |
| 264 | 62.8.4 | Test Web Server |  | 2d | 2010-07-14 | 2010-07-15 |  |  |  | 87d |  | start no earlier than 2010-07-14 | Tester | 16h |  | 300 |  |
| 266 | 62.9 | **Capacitacion del Personal Para el Uso de la APP** |  | 11d | 2010-11-01 | 2010-11-15 | 257, 258 |  |  | 0d |  |  |  | 240h |  | 8,500 |  |
| 267 | 62.9.1 | Capcitacion Usuario Operador |  | 5d | 2010-11-01 | 2010-11-05 |  |  |  | 6d |  | start no earlier than 2010-11-01 | Arquitecto; Programador Sr 1; Programador Sr 2 | 120h |  | 4,250 |  |
| 268 | 62.9.2 | Capacitacion Usuario Administrador |  | 5d | 2010-11-09 | 2010-11-15 |  |  |  | 0d |  | start no earlier than 2010-11-09 | Arquitecto; Programador Sr 1; Programador Sr 2 | 120h |  | 4,250 |  |
| 270 | 63 | Retoques, Desarrollos Finales, Ultimas Pruebas |  | 10d | 2010-10-04 | 2010-10-15 |  |  |  | 7d | 0d | start no earlier than 2010-10-04 | Programador Jr 1; Prog SSr 1; Programador Jr 2; Programador Sr 1; Programador Sr 2 | 256h |  | 4,800 |  |
| 271 | 64 | Mantenimiento de la Infra |  | 10d | 2010-06-18 A | 2010-08-20 |  | 90% | 1d | 61d |  | start no earlier than 2010-06-18 | IT 1 | 80h | 72h | 2,000 | 1,800 |
